# Demo Tower — G+2 Residential Building

Schedule from MS Project XML, 2026-08-03 to 2027-03-06, status date 2026-10-24, costs in Br, A marks actual dates.
Demo Construction PLC

## Calendars

- Ethiopian 6-day (Mon–Sat): Mon-Sat 08:00-12:00, 13:00-17:00; Sun off. Exceptions (off unless hours are given): 2026-09-11 (Enkutatash (Ethiopian New Year)), 2026-09-27 (Meskel), 2027-01-07 (Genna (Ethiopian Christmas)), 2027-01-19 (Timket (Epiphany)), 2027-03-02 (Adwa Victory Day).

## Resources

| Resource | Unit |
| --- | --- |
| Concrete gang (foreman + 8) |  |
| C-25 ready-mix concrete | m3 |
| Masonry subcontractor |  |

## Schedule

| ID | WBS | Task | Type | Duration | Start | Finish | Predecessors | Complete | Remaining | Baseline start | Baseline finish | Baseline duration | Total slack | Free slack | Constraint | Resources | Cost | Baseline cost | Actual cost | BoQ Code | Element Codes |
| --- | --- | --- | --- | --- | --- | --- | --- | --- | --- | --- | --- | --- | --- | --- | --- | --- | --- | --- | --- | --- | --- |
| 1 | 1 | **Preliminaries** |  | 165d? | 2026-08-03 A | 2027-02-13 |  | 39% | 100.62d? | 2026-08-03 | 2027-02-13 | 165d | 0d |  |  |  | 2,180,000 | 2,180,000 | 850,200 |  |  |
| 2 | 1.1 | Contract signed / Notice to proceed | milestone | 0d | 2026-08-03 A | 2026-08-03 A |  | 100% |  | 2026-08-03 | 2026-08-03 | 0d |  |  | must start on 2026-08-03 |  |  |  |  |  |  |
| 3 | 1.2 | Site mobilisation & hoarding |  | 6d | 2026-08-03 A | 2026-08-08 A | 2 | 100% |  | 2026-08-03 | 2026-08-08 | 6d |  |  |  |  | 185,000 | 185,000 | 185,000 | 1.1.1 |  |
| 4 | 1.3 | Temporary site office, stores & toilets |  | 5d | 2026-08-05 A | 2026-08-10 A | 3SS+2d | 100% |  | 2026-08-05 | 2026-08-10 | 5d |  |  |  |  | 240,000 | 240,000 | 240,000 | 1.1.2 |  |
| 5 | 1.4 | Setting out & survey |  | 3d | 2026-08-10 A | 2026-08-12 A | 3 | 100% |  | 2026-08-10 | 2026-08-12 | 3d |  |  |  |  | 45,000 | 45,000 | 45,000 | 1.1.3 |  |
| 6 | 1.5 | Site overheads & supervision |  | 165d | 2026-08-03 A | 2027-02-13 | 2SS | 33% | 110.5d | 2026-08-03 | 2027-02-13 | 165d | 17d |  |  |  | 1,650,000 | 1,650,000 | 544,500 | 1.2.1 |  |
| 7 | 1.6 | Mobilise concrete mixer & vibrators |  | 2d | 2026-08-10 A | 2026-08-11 A | 3 | 100% |  | 2026-08-10 | 2026-08-11 | 2d |  |  |  |  | 60,000 | 60,000 | 60,000 | 1.1.4 |  |
| 8 | 2 | **Substructure** |  | 38d? | 2026-08-13 A | 2026-09-26 A |  | 100% |  | 2026-08-13 | 2026-09-24 | 36d |  |  |  |  | 2,602,000 | 2,602,000 | 2,602,000 |  |  |
| 9 | 2.1 | Bulk excavation to formation level |  | 8d | 2026-08-13 A | 2026-08-21 A | 5, 7 | 100% |  | 2026-08-13 | 2026-08-19 | 6d |  |  |  |  | 420,000 | 420,000 | 420,000 | 2.1.1 |  |
| 10 | 2.2 | Trench excavation for grade beams |  | 4d | 2026-08-18 A | 2026-08-21 A | 9SS+4d | 100% |  | 2026-08-18 | 2026-08-21 | 4d |  |  |  |  | 96,000 | 96,000 | 96,000 | 2.1.2 |  |
| 11 | 2.3 | Anti-termite soil treatment |  | 1d | 2026-08-22 A | 2026-08-22 A | 9 | 100% |  | 2026-08-20 | 2026-08-20 | 1d |  |  |  |  | 38,000 | 38,000 | 38,000 | 2.1.3 |  |
| 12 | 2.4 | Blinding concrete C-15, 50 mm |  | 3d | 2026-08-24 A | 2026-08-26 A | 11 | 100% |  | 2026-08-21 | 2026-08-24 | 3d |  |  |  |  | 130,000 | 130,000 | 130,000 | 2.2.1 |  |
| 13 | 2.5 | **Footings** |  | 7d? | 2026-08-27 A | 2026-09-03 A |  | 100% |  | 2026-08-25 | 2026-09-01 | 7d |  |  |  |  | 840,000 | 840,000 | 840,000 |  |  |
| 14 | 2.5.1 | Footing F1 — rebar, formwork & pour |  | 4d | 2026-08-27 A | 2026-08-31 A | 12 | 100% |  | 2026-08-25 | 2026-08-28 | 4d |  |  |  | Concrete gang (foreman + 8); C-25 ready-mix concrete [1 m3] | 210,000 | 210,000 | 210,000 | 2.3.1 | F1 |
| 15 | 2.5.2 | Footing F2 — rebar, formwork & pour |  | 4d | 2026-08-28 A | 2026-09-01 A | 14SS+1d | 100% |  | 2026-08-26 | 2026-08-29 | 4d |  |  |  | Concrete gang (foreman + 8); C-25 ready-mix concrete [1 m3] | 210,000 | 210,000 | 210,000 | 2.3.1 | F2 |
| 16 | 2.5.3 | Footing F3 — rebar, formwork & pour |  | 4d | 2026-08-29 A | 2026-09-02 A | 15SS+1d | 100% |  | 2026-08-27 | 2026-08-31 | 4d |  |  |  | Concrete gang (foreman + 8); C-25 ready-mix concrete [1 m3] | 210,000 | 210,000 | 210,000 | 2.3.1 | F3 |
| 17 | 2.5.4 | Footing F4 — rebar, formwork & pour |  | 4d | 2026-08-31 A | 2026-09-03 A | 16SS+1d | 100% |  | 2026-08-28 | 2026-09-01 | 4d |  |  |  | Concrete gang (foreman + 8); C-25 ready-mix concrete [1 m3] | 210,000 | 210,000 | 210,000 | 2.3.1 | F4 |
| 18 | 2.6 | Grade beams GB1–GB4 |  | 6d | 2026-09-04 A | 2026-09-10 A | 13, 10 | 100% |  | 2026-09-02 | 2026-09-08 | 6d |  |  |  |  | 365,000 | 365,000 | 365,000 | 2.4.1 | GB1;GB2;GB3;GB4 |
| 19 | 2.7 | Column stubs to plinth level |  | 3d | 2026-09-07 A | 2026-09-09 A | 18SS+2d | 100% |  | 2026-09-04 | 2026-09-07 | 3d |  |  |  |  | 88,000 | 88,000 | 88,000 | 2.4.2 |  |
| 20 | 2.8 | Backfill & compaction in layers |  | 5d | 2026-09-15 A | 2026-09-19 A | 18FS+2d | 100% |  | 2026-09-12 | 2026-09-17 | 5d |  |  |  |  | 140,000 | 140,000 | 140,000 | 2.5.1 |  |
| 21 | 2.9 | Hardcore, DPM & ground slab on grade |  | 5d | 2026-09-21 A | 2026-09-25 A | 20 | 100% |  | 2026-09-18 | 2026-09-23 | 5d |  |  |  |  | 310,000 | 310,000 | 310,000 | 2.6.1 |  |
| 22 | 2.10 | Sewer line & manholes |  | 6d | 2026-09-21 A | 2026-09-26 A | 20 | 100% |  | 2026-09-18 | 2026-09-24 | 6d |  |  |  |  | 175,000 | 175,000 | 175,000 | 6.2.2 |  |
| 23 | 2.11 | Substructure complete | milestone | 0d | 2026-09-25 A | 2026-09-25 A | 21, 19 | 100% |  | 2026-09-23 | 2026-09-23 | 0d |  |  |  |  |  |  |  |  |  |
| 24 | 3 | **Superstructure — Level 1** |  | 26d? | 2026-09-26 A | 2026-10-26 |  | 97% | 0.75d? | 2026-09-24 | 2026-10-23 | 26d | 0d |  |  |  | 1,787,000 | 1,747,000 | 1,733,390 |  |  |
| 25 | 3.1 | **Columns L1** |  | 8d? | 2026-09-26 A | 2026-10-05 A |  | 100% |  | 2026-09-24 | 2026-10-02 | 8d |  |  |  |  | 372,000 | 372,000 | 372,000 |  |  |
| 26 | 3.1.1 | Column C1 — rebar, formwork & pour |  | 3d | 2026-09-26 A | 2026-09-29 A | 23 | 100% |  | 2026-09-24 | 2026-09-26 | 3d |  |  |  | Concrete gang (foreman + 8) | 62,000 | 62,000 | 62,000 | 3.1.1 | C1 |
| 27 | 3.1.2 | Column C2 — rebar, formwork & pour |  | 3d | 2026-09-28 A | 2026-09-30 A | 26SS+1d | 100% |  | 2026-09-25 | 2026-09-28 | 3d |  |  |  | Concrete gang (foreman + 8) | 62,000 | 62,000 | 62,000 | 3.1.1 | C2 |
| 28 | 3.1.3 | Column C3 — rebar, formwork & pour |  | 3d | 2026-09-29 A | 2026-10-01 A | 27SS+1d | 100% |  | 2026-09-26 | 2026-09-29 | 3d |  |  |  | Concrete gang (foreman + 8) | 62,000 | 62,000 | 62,000 | 3.1.1 | C3 |
| 29 | 3.1.4 | Column C4 — rebar, formwork & pour |  | 3d | 2026-09-30 A | 2026-10-02 A | 28SS+1d | 100% |  | 2026-09-28 | 2026-09-30 | 3d |  |  |  | Concrete gang (foreman + 8) | 62,000 | 62,000 | 62,000 | 3.1.1 | C4 |
| 30 | 3.1.5 | Column C5 — rebar, formwork & pour |  | 3d | 2026-10-01 A | 2026-10-03 A | 29SS+1d | 100% |  | 2026-09-29 | 2026-10-01 | 3d |  |  |  | Concrete gang (foreman + 8) | 62,000 | 62,000 | 62,000 | 3.1.1 | C5 |
| 31 | 3.1.6 | Column C6 — rebar, formwork & pour |  | 3d | 2026-10-02 A | 2026-10-05 A | 30SS+1d | 100% |  | 2026-09-30 | 2026-10-02 | 3d |  |  |  | Concrete gang (foreman + 8) | 62,000 | 62,000 | 62,000 | 3.1.1 | C6 |
| 32 | 3.2 | Beam B1 — formwork, rebar & pour |  | 7d | 2026-10-06 A | 2026-10-13 A | 31 | 100% |  | 2026-10-03 | 2026-10-10 | 7d |  |  |  |  | 190,000 | 190,000 | 190,000 | 3.2.1 | B1 |
| 33 | 3.3 | Slab S1 — formwork & rebar |  | 10d | 2026-10-09 A | 2026-10-20 A | 32SS+3d | 100% |  | 2026-10-07 | 2026-10-17 | 10d |  |  |  |  | 520,000 | 480,000 | 520,000 | 3.3.1 | S1 |
| 34 | 3.4 | Slab S1 — concrete pour & curing |  | 3d | 2026-10-21 A | 2026-10-23 A | 33, 32FF+1d | 100% |  | 2026-10-19 | 2026-10-21 | 3d |  |  |  | C-25 ready-mix concrete [1 m3] | 610,000 | 610,000 | 610,000 | 3.3.2 | S1 |
| 35 | 3.5 | Staircase GF–L1 |  | 4d | 2026-10-22 A | 2026-10-26 | 34SS+1d | 65% | 1.38d | 2026-10-20 | 2026-10-23 | 4d | 20d | 0d |  |  | 95,000 | 95,000 | 61,750 | 3.4.1 |  |
| 36 | 3.6 | L1 frame complete | milestone | 0d | 2026-10-26 | 2026-10-26 | 34, 35 |  |  | 2026-10-23 | 2026-10-23 | 0d | 20d | 0d |  |  |  |  |  |  |  |

Notes:
- 6: Level of effort: site manager, foreman, store keeper, guards.
- 34: Pour in one continuous operation; ready-mix C-25 from batching plant. Cure 7 days min.

| ID | WBS | Task | Type | Duration | Start | Finish | Predecessors | Baseline start | Baseline finish | Baseline duration | Total slack | Free slack | Constraint | Resources | Cost | Baseline cost | BoQ Code | Element Codes |
| --- | --- | --- | --- | --- | --- | --- | --- | --- | --- | --- | --- | --- | --- | --- | --- | --- | --- | --- |
| 37 | 4 | **Superstructure — Level 2 & Roof** |  | 35d? | 2026-11-02 | 2026-12-11 |  | 2026-10-30 | 2026-12-09 | 35d | -5d | 0d |  |  | 1,997,000 | 1,997,000 |  |  |
| 38 | 4.1 | L2 columns (6 nr) — rebar, formwork & pour |  | 8d | 2026-11-02 | 2026-11-10 | 34FS+7d | 2026-10-30 | 2026-11-07 | 8d | -5d | 0d |  |  | 372,000 | 372,000 | 4.1.1 |  |
| 39 | 4.2 | L2 beams |  | 6d | 2026-11-11 | 2026-11-17 | 38 | 2026-11-09 | 2026-11-14 | 6d | -5d | 0d |  |  | 190,000 | 190,000 | 4.2.1 |  |
| 40 | 4.3 | L2 roof slab — formwork & rebar |  | 8d | 2026-11-14 | 2026-11-23 | 39SS+3d | 2026-11-12 | 2026-11-20 | 8d | -5d | 0d |  |  | 520,000 | 520,000 | 4.3.1 |  |
| 41 | 4.4 | L2 roof slab — concrete pour & curing |  | 3d | 2026-11-24 | 2026-11-26 | 40 | 2026-11-21 | 2026-11-24 | 3d | -5d | 0d |  |  | 610,000 | 610,000 | 4.3.2 |  |
| 42 | 4.5 | Staircase L1–L2 & parapet walls |  | 6d | 2026-11-27 | 2026-12-03 | 41 | 2026-11-25 | 2026-12-01 | 6d | -5d | 0d |  |  | 160,000 | 160,000 | 4.4.1 |  |
| 43 | 4.6 | Roof waterproofing membrane |  | 4d | 2026-12-08 | 2026-12-11 | 42FS+3d | 2026-12-05 | 2026-12-09 | 4d | 53d | 0d |  |  | 145,000 | 145,000 | 4.5.1 |  |
| 44 | 4.7 | Structural frame complete | milestone | 0d | 2026-12-03 | 2026-12-03 | 42 | 2026-12-01 | 2026-12-01 | 0d | -5d | 0d | finish no later than 2026-11-27 |  |  |  |  |  |
| 45 | 5 | **Masonry** |  | 44d? | 2026-10-30 | 2026-12-19 |  | 2026-10-28 | 2026-12-17 | 44d | 0d |  |  |  | 1,000,000 | 1,000,000 |  |  |
| 46 | 5.1 | Wall W1 — HCB external walls L1 |  | 10d | 2026-10-30 | 2026-11-10 | 36FS+3d | 2026-10-28 | 2026-11-07 | 10d | 20d | 0d |  | Masonry subcontractor | 280,000 | 280,000 | 5.1.1 | W1 |
| 47 | 5.2 | HCB internal partitions L1 |  | 8d | 2026-11-04 | 2026-11-12 | 46SS+4d | 2026-11-02 | 2026-11-10 | 8d | 95d |  |  |  | 190,000 | 190,000 | 5.1.2 |  |
| 48 | 5.3 | HCB external walls & partitions L2 |  | 12d | 2026-12-04 | 2026-12-17 | 44, 46 | 2026-12-02 | 2026-12-15 | 12d | 0d |  |  |  | 410,000 | 410,000 | 5.2.1 |  |
| 49 | 5.4 | Lintels, sills & stiffener columns |  | 6d | 2026-12-14 | 2026-12-19 | 46SS+5d, 48FF+2d | 2026-12-11 | 2026-12-17 | 6d | 0d |  |  |  | 120,000 | 120,000 | 5.3.1 |  |
| 50 | 6 | **MEP** |  | 92d? | 2026-11-02 | 2027-02-18 |  | 2026-10-30 | 2027-02-16 | 92d | 1d | 0d |  |  | 1,785,000 | 1,785,000 |  |  |
| 51 | 6.1 | Electrical conduits & boxes |  | 15d | 2026-11-02 | 2026-11-18 | 46SS+2d | 2026-10-30 | 2026-11-16 | 15d | 46d | 45d |  |  | 230,000 | 230,000 | 6.1.1 |  |
| 52 | 6.2 | Plumbing rough-in & sleeves |  | 12d | 2026-11-03 | 2026-11-16 | 46SS+3d | 2026-10-31 | 2026-11-13 | 12d | 29d |  |  |  | 260,000 | 260,000 | 6.2.1 |  |
| 53 | 6.3 | Earthing & lightning protection |  | 3d | 2026-12-12 | 2026-12-15 | 43 | 2026-12-10 | 2026-12-12 | 3d | 67d |  |  |  | 85,000 | 85,000 | 6.1.4 |  |
| 54 | 6.4 | Wiring & cable pulling |  | 10d | 2027-01-12 | 2027-01-23 | 61, 51 | 2027-01-09 | 2027-01-21 | 10d | 1d | 0d |  |  | 210,000 | 210,000 | 6.1.2 |  |
| 55 | 6.5 | Water tank, pump & roof plumbing |  | 4d | 2026-12-12 | 2026-12-16 | 43 | 2026-12-10 | 2026-12-14 | 4d | 53d | 49d |  |  | 190,000 | 190,000 | 6.2.3 |  |
| 56 | 6.6 | Sanitary fixtures |  | 6d | 2027-02-06 | 2027-02-12 | 64 | 2027-02-04 | 2027-02-10 | 6d | 5d | 1d |  |  | 340,000 | 340,000 | 6.2.4 |  |
| 57 | 6.7 | Lighting fixtures, sockets & distribution boards |  | 5d | 2027-02-09 | 2027-02-13 | 54, 72SS+2d | 2027-02-06 | 2027-02-11 | 5d | 4d | 0d |  |  | 260,000 | 260,000 | 6.1.3 |  |
| 58 | 6.8 | Fire alarm & detection |  | 4d | 2027-01-25 | 2027-01-28 | 54 | 2027-01-22 | 2027-01-26 | 4d | 18d | 14d |  |  | 150,000 | 150,000 | 6.3.1 |  |
| 59 | 6.9 | Testing & commissioning |  | 4d | 2027-02-15 | 2027-02-18 | 56, 57, 58, 55 | 2027-02-12 | 2027-02-16 | 4d | 4d |  |  |  | 60,000 | 60,000 | 6.4.1 |  |
| 60 | 7 | **Finishes** |  | 54d? | 2026-12-21 | 2027-02-23 |  | 2026-12-18 | 2027-02-20 | 54d | 0d |  |  |  | 3,345,000 | 3,345,000 |  |  |
| 61 | 7.1 | Internal plastering |  | 18d | 2026-12-21 | 2027-01-11 | 49, 52 | 2026-12-18 | 2027-01-08 | 18d | 0d |  |  |  | 380,000 | 380,000 | 7.1.1 |  |
| 62 | 7.2 | External plastering |  | 15d | 2026-12-26 | 2027-01-13 | 61SS+5d | 2026-12-24 | 2027-01-11 | 15d | 23d | 0d |  |  | 330,000 | 330,000 | 7.1.2 |  |
| 63 | 7.3 | Cement-sand floor screed |  | 10d | 2027-01-08 | 2027-01-20 | 61FS-3d | 2027-01-05 | 2027-01-16 | 10d | 0d |  |  |  | 210,000 | 210,000 | 7.2.1 |  |
| 64 | 7.4 | Ceramic floor & wall tiling |  | 14d | 2027-01-21 | 2027-02-05 | 63 | 2027-01-18 | 2027-02-03 | 14d | 0d |  |  |  | 460,000 | 460,000 | 7.2.2 |  |
| 65 | 7.5 | Marble cladding to staircase |  | 5d | 2027-01-21 | 2027-01-26 | 63 | 2027-01-18 | 2027-01-23 | 5d | 20d | 0d |  |  | 175,000 | 175,000 | 7.2.3 |  |
| 66 | 7.6 | Gypsum false ceiling |  | 10d | 2027-01-26 | 2027-02-05 | 64SS+4d, 54 | 2027-01-23 | 2027-02-03 | 10d | 0d |  |  |  | 240,000 | 240,000 | 7.3.1 |  |

| ID | WBS | Task | Type | Duration | Start | Finish | Predecessors | Baseline start | Baseline finish | Baseline duration | Total slack | Free slack | Constraint | Cost | Baseline cost | BoQ Code |
| --- | --- | --- | --- | --- | --- | --- | --- | --- | --- | --- | --- | --- | --- | --- | --- | --- |
| 67 | 7.7 | **Doors & windows** |  | 25d? | 2027-01-14 | 2027-02-12 |  | 2027-01-12 | 2027-02-10 | 25d | 9d | 0d |  | 670,000 | 670,000 |  |
| 68 | 7.7.1 | Metal windows & glazing |  | 8d | 2027-01-14 | 2027-01-23 | 62 | 2027-01-12 | 2027-01-21 | 8d | 23d |  | start no earlier than 2027-01-11 | 390,000 | 390,000 | 7.4.1 |
| 69 | 7.7.2 | Doors & ironmongery |  | 6d | 2027-02-06 | 2027-02-12 | 64 | 2027-02-04 | 2027-02-10 | 6d | 9d |  |  | 280,000 | 280,000 | 7.4.2 |
| 70 | 7.8 | Kitchen cabinets & worktops [7.6.1] |  | 5d | 2027-02-06 | 2027-02-11 | 64 |  |  |  | 10d |  |  | 220,000 |  |  |
| 71 | 7.9 | Balustrades & handrails |  | 4d | 2027-01-27 | 2027-01-30 | 65 |  |  |  | 20d |  |  | 120,000 |  | 7.7.1 |
| 72 | 7.10 | Painting — internal & external |  | 14d | 2027-02-06 | 2027-02-22 | 66, 68FF+2d | 2027-02-04 | 2027-02-19 | 14d | 0d |  |  | 360,000 | 360,000 | 7.5.1 |
| 73 | 7.11 | External works & landscaping |  | 10d | 2027-02-12 | 2027-02-23 | 72SS+5d | 2027-02-10 | 2027-02-20 | 10d | 0d |  |  | 180,000 | 180,000 |  |
| 74 | 8 | **Testing & Handover** |  | 9d? | 2027-02-24 | 2027-03-06 |  | 2027-02-22 | 2027-03-04 | 9d | 0d |  |  | 135,000 | 135,000 |  |
| 75 | 8.1 | Snagging & defects rectification |  | 6d | 2027-02-24 | 2027-03-03 | 72, 59, 69, 70, 71, 73 | 2027-02-22 | 2027-02-27 | 6d | 0d |  |  | 90,000 | 90,000 | 8.1.1 |
| 76 | 8.2 | Final cleaning & handover documents |  | 3d | 2027-03-04 | 2027-03-06 | 75 | 2027-03-01 | 2027-03-04 | 3d | 0d |  |  | 45,000 | 45,000 | 8.1.2 |
| 77 | 8.3 | Practical completion | milestone | 0d | 2027-03-06 | 2027-03-06 | 76 | 2027-03-04 | 2027-03-04 | 0d | 0d |  |  |  |  |  |
